# A&D High Tech Online Store

Schedule from MS Project, 2014-05-12 to 2015-09-28, costs in $.
A&D High Tech

## Calendars

- Standard: Mon-Fri 08:00-12:00, 13:00-17:00; Sat-Sun off.

## Resources

| Resource | Rate |
| --- | --- |
| Chris Johnson | 75 |
| Ryan Neff | 75 |
| Stacy Lyle | 75 |
| Rick Burke | 75 |
| Marc Sanders | 75 |
| Developer 1 | 165 |
| Sanjay Vohra | 75 |
| Kara Siposki | 75 |
| Todd Eliason | 75 |
| Developer 2 | 175 |
| Developer 3 | 175 |
| Todd Fredson |  |
| Jeff White |  |
| Chuck Gagler |  |
| Trainer | 75 |

## Schedule

| ID | WBS | Task | Type | Duration | Start | Finish | Predecessors | Resources | Work | Cost |
| --- | --- | --- | --- | --- | --- | --- | --- | --- | --- | --- |
| 1 | 1 | **Overall Project** |  | 350d | 2014-05-27 | 2015-09-28 |  |  | 34592.4h | 3,721,442.4 |
| 2 | 1.1 | **Project Management** |  | 127d | 2014-05-27 | 2014-11-19 |  |  | 1016h | 76,200 |
| 3 | 1.1.1 | Manage Project | manual | 127d | 2014-05-27 | 2014-11-19 | 59FF | Chris Johnson | 1016h | 76,200 |
| 4 | 1.2 | **System Requirements** |  | 29d? | 2014-05-27 | 2014-07-04 |  |  | 616h | 46,200 |
| 5 | 1.2.1 | Gather Business Requirements | manual | 8d | 2014-05-27 | 2014-06-05 |  | Ryan Neff; Stacy Lyle | 128h | 9,600 |
| 6 | 1.2.2 | Design Business Process Flows | manual | 4d | 2014-06-06 | 2014-06-11 | 5 | Ryan Neff; Stacy Lyle | 64h | 4,800 |
| 7 | 1.2.3 | Finalize Technical Requirements | manual | 6d | 2014-05-12 | 2014-05-19 |  | Rick Burke | 48h | 3,600 |
| 8 | 1.2.4 | Create Operational Requirements | manual | 15d | 2014-06-12 | 2014-07-02 | 5, 6 | Stacy Lyle; Rick Burke; Ryan Neff | 360h | 27,000 |
| 9 | 1.2.5 | Identify Technical Infrastructure Needs | manual | 2d | 2014-07-03 | 2014-07-04 | 7, 8 | Rick Burke | 16h | 1,200 |
| 10 | 1.3 | **Software Requirements** |  | 16d? | 2014-05-27 | 2014-06-17 |  |  | 320h | 24,000 |
| 11 | 1.3.1 | **Create Functional Requirements** |  | 1d? | 2014-05-27 | 2014-05-27 | 5, 6, 8 |  | 208h | 15,600 |
| 12 | 1.3.1.1 | Capture Customer Profile | manual | 4d | 2014-05-27 | 2014-05-30 |  | Ryan Neff | 32h | 2,400 |
| 13 | 1.3.1.2 | View and Search Product Catalog | manual | 6d | 2014-05-27 | 2014-06-03 |  | Ryan Neff | 48h | 3,600 |
| 14 | 1.3.1.3 | Updating and Calculating Shopping Cart | manual | 3d | 2014-06-04 | 2014-06-06 | 13 | Ryan Neff | 24h | 1,800 |
| 15 | 1.3.1.4 | Taking Payments | manual | 6d | 2014-05-27 | 2014-06-03 |  | Stacy Lyle | 48h | 3,600 |
| 16 | 1.3.1.5 | Submit Order | manual | 4d | 2014-06-09 | 2014-06-12 | 12, 13, 14, 15 | Ryan Neff | 32h | 2,400 |
| 17 | 1.3.1.6 | Check Order History & Order Status | manual | 3d | 2014-06-13 | 2014-06-17 | 16 | Ryan Neff | 24h | 1,800 |
| 18 | 1.3.2 | Create Data Requirements | manual | 3d | 2014-06-04 | 2014-06-06 | 12, 13 | Stacy Lyle | 24h | 1,800 |
| 19 | 1.3.3 | Create ERP Interface Requirements | manual | 7d | 2014-06-09 | 2014-06-17 | 16SS | Stacy Lyle | 56h | 4,200 |
| 20 | 1.3.4 | Create User Interface Requirements | manual | 4d | 2014-05-27 | 2014-05-30 | 11SS | Stacy Lyle | 32h | 2,400 |
| 21 | 1.4 | **Detailed Design** |  | 1d? | 2014-07-04 | 2014-07-04 | 10 |  | 1552h | 144,840 |
| 22 | 1.4.1 | Design Capture Customer Profile Pages & Components | manual | 13.5d | 2014-07-04 | 2014-07-23 |  | Marc Sanders; Ryan Neff | 216h | 16,200 |
| 23 | 1.4.2 | Design View and Search Product Catalog Pages & Components | manual | 13.5d | 2014-07-04 | 2014-07-23 |  | Developer 1; Ryan Neff | 216h | 25,920 |
| 24 | 1.4.3 | Design Updating and Calculating Shopping Cart | manual | 6d | 2014-07-24 | 2014-07-31 | 23 | Developer 1; Ryan Neff | 96h | 11,520 |
| 25 | 1.4.4 | Design Taking Payments Pages & Components | manual | 6d | 2014-07-04 | 2014-07-11 |  | Stacy Lyle; Marc Sanders | 96h | 7,200 |
| 26 | 1.4.5 | Design Submit Order Pages & Components | manual | 16d | 2014-08-01 | 2014-08-22 | 22, 23, 24, 25 | Marc Sanders; Ryan Neff | 256h | 19,200 |
| 27 | 1.4.6 | Design Check Order History & Order Status Pages & Components | manual | 4d | 2014-08-23 | 2014-08-27 | 26 | Ryan Neff; Marc Sanders | 64h | 4,800 |
| 28 | 1.4.7 | Design Logical & Physical Data Model | manual | 18d | 2014-07-04 | 2014-07-29 |  | Sanjay Vohra; Stacy Lyle | 288h | 21,600 |
| 29 | 1.4.8 | Design ERP Interface | manual | 20d | 2014-08-01 | 2014-08-28 | 22, 23, 24, 25 | Stacy Lyle; Developer 1 | 320h | 38,400 |

| ID | WBS | Task | Type | Duration | Start | Finish | Predecessors | Resources | Work | Cost |
| --- | --- | --- | --- | --- | --- | --- | --- | --- | --- | --- |
| 30 | 1.5 | **Test Planning** |  | 1d? | 2014-05-27 | 2014-05-27 |  |  | 896h | 67,200 |
| 31 | 1.5.1 | Gather Testing Requirements | manual | 14d | 2014-05-27 | 2014-06-13 | 11 | Kara Siposki; Todd Eliason | 224h | 16,800 |
| 32 | 1.5.2 | Create System Test Plan & Test Cases | manual | 20d | 2014-08-29 | 2014-09-25 | 31, 21 | Kara Siposki; Todd Eliason | 320h | 24,000 |
| 33 | 1.5.3 | Write System Test Scripts | manual | 22d | 2014-09-26 | 2014-10-27 | 32 | Kara Siposki; Todd Eliason | 352h | 26,400 |
| 34 | 1.6 | **Technical Infrastructure** |  | 1d? | 2014-05-27 | 2014-05-27 |  |  | 868.8h | 65,160 |
| 35 | 1.6.1 | Create Development Environment | manual | 20d | 2014-07-07 | 2014-11-24 | 9 | Rick Burke | 160h | 12,000 |
| 36 | 1.6.2 | Create Testing Environment | manual | 34.2d | 2014-08-01 | 2014-09-18 | 35 | Rick Burke | 273.6h | 20,520 |
| 37 | 1.6.3 | Support Development Environment | manual | 3.8d | 2014-08-01 | 2014-08-06 | 35 | Rick Burke | 30.4h | 2,280 |
| 38 | 1.6.4 | Support Testing Environment & Deployment | manual | 46d | 2014-09-19 | 2014-11-21 | 36 | Rick Burke | 368h | 27,600 |
| 39 | 1.6.5 | Support Database | manual | 4.6d | 2014-06-17 | 2014-06-24 | 47 | Sanjay Vohra | 36.8h | 2,760 |
| 40 | 1.7 | **Development & Unit Test** |  | 1d? | 2014-05-27 | 2014-05-27 | 35 |  | 1740h | 212,260 |
| 41 | 1.7.1 | Build Capture Customer Profile Pages & Components | manual | 13d | 2014-07-24 | 2014-08-11 | 22 | Developer 2 | 104h | 18,200 |
| 42 | 1.7.2 | Build View and Search Product Catalog Pages & Components | manual | 12d | 2014-07-24 | 2014-08-08 | 23 | Developer 3 | 96h | 16,800 |
| 43 | 1.7.3 | Build Updating and Calculating Shopping Cart | manual | 7d | 2014-08-09 | 2014-08-18 | 24, 42 | Developer 3 | 56h | 9,800 |
| 44 | 1.7.4 | Build Taking Payments Pages & Components | manual | 6d | 2014-07-12 | 2014-07-18 | 25 | Developer 2 | 48h | 8,400 |
| 45 | 1.7.5 | Build Submit Order Pages & Components | manual | 24d | 2014-08-23 | 2014-09-24 | 26, 41, 42, 43, 44 | Developer 2; Developer 3 | 384h | 67,200 |
| 46 | 1.7.6 | Build Check Order History & Order Status Pages & Components | manual | 6d | 2014-08-28 | 2014-09-04 | 27 | Marc Sanders | 48h | 3,600 |
| 47 | 1.7.7 | Build Logical & Physical Data Model | manual | 15.5d | 2014-07-30 | 2014-08-20 | 28 | Sanjay Vohra | 124h | 9,300 |
| 48 | 1.7.8 | Build ERP Interface | manual | 18d | 2014-08-29 | 2014-09-23 | 29 | Developer 1 | 144h | 23,760 |
| 49 | 1.7.9 | Support Development & Assembly Test | manual | 46d | 2014-08-29 | 2014-10-31 | 21 | Ryan Neff; Stacy Lyle | 736h | 55,200 |
| 50 | 1.8 | **Testing** |  | 1d? | 2014-08-19 | 2014-08-19 |  |  | 16096h | 1,810,400 |
| 51 | 1.8.1 | **Perform Assembly Testing** |  | 1d? | 2014-08-19 | 2014-08-19 | 31 |  | 736h | 101,600 |
| 52 | 1.8.1.1 | Perform Phase 1 Testing | manual | 12d | 2014-08-19 | 2014-09-03 | 41, 42, 43 | Marc Sanders | 96h | 7,200 |
| 53 | 1.8.1.2 | Perform Phase 2 Testing | manual | 20d | 2014-09-25 | 2014-10-22 | 44, 45, 46, 52, 47, 48 | Developer 1; Developer 2; Developer 3; Marc Sanders | 640h | 94,400 |
| 54 | 1.8.2 | Perform System Testing | manual | 160d | 2014-10-28 | 2015-06-08 | 51, 32, 33 | Todd Eliason; Kara Siposki; Developer 1; Developer 2; Developer 3; Marc Sanders; Ryan Neff; Stacy Lyle | 10240h | 1,139,200 |
| 55 | 1.8.3 | Perform Validation Testing | manual | 80d | 2015-06-09 | 2015-09-28 | 54 | Developer 1; Developer 2; Developer 3; Kara Siposki; Marc Sanders; Todd Eliason; Stacy Lyle; Ryan Neff | 5120h | 569,600 |

| ID | WBS | Task | Type | Duration | Start | Finish | Predecessors | Resources | Work | Cost |
| --- | --- | --- | --- | --- | --- | --- | --- | --- | --- | --- |
| 56 | 1.9 | **Deployment** |  | 1d? | 2014-05-27 | 2014-05-27 |  |  | 11392h | 1,267,360 |
| 57 | 1.9.1 | Implement System | manual | 80d | 2014-05-28 | 2014-09-16 | 50 | Developer 1; Developer 2; Developer 3; Kara Siposki; Ryan Neff; Stacy Lyle; Marc Sanders; Todd Eliason | 5120h | 569,600 |
| 58 | 1.9.2 | Deploy To Production | manual | 8d | 2014-09-17 | 2014-09-26 | 57 | Developer 1; Developer 2; Developer 3; Kara Siposki; Ryan Neff; Stacy Lyle; Marc Sanders; Todd Eliason | 512h | 56,960 |
| 59 | 1.9.3 | Project Wrap-Up | manual | 90d | 2014-09-29 | 2015-01-30 | 58 | Developer 1; Developer 2; Developer 3; Kara Siposki; Ryan Neff; Stacy Lyle; Marc Sanders; Todd Eliason | 5760h | 640,800 |
| 60 | 1.10 | **Training and Documentation** |  | 9d | 2014-09-30 | 2014-10-10 |  |  | 95.6h | 7,822.4 |
| 61 | 1.10.1 | **Create Documentation** |  | 5d | 2014-09-30 | 2014-10-06 |  |  | 23.6h | 2,422.4 |
| 62 | 1.10.1.1 | Document Technical Specification | manual | 1d | 2014-09-30 | 2014-09-30 |  | Developer 1 [12%]; Developer 2 [12%]; Developer 3 [12%]; Kara Siposki [13%]; Ryan Neff [13%]; Stacy Lyle [13%]; Marc Sanders [13%]; Todd Eliason [12%] | 8h | 878.4 |
| 63 | 1.10.1.2 | Document Source Code | manual | 1d | 2014-10-01 | 2014-10-01 |  | Developer 1 [10%]; Developer 2 [10%]; Developer 3 [10%]; Kara Siposki [10%]; Ryan Neff [10%]; Stacy Lyle [10%]; Marc Sanders [10%]; Todd Eliason [10%] | 6.4h | 712 |
| 64 | 1.10.1.3 | Prepare System Documentation manual | manual | 1d | 2014-10-02 | 2014-10-02 |  | Developer 1 [10%]; Developer 2 [10%]; Developer 3 [10%]; Kara Siposki [10%]; Ryan Neff [10%]; Stacy Lyle [10%]; Marc Sanders [10%]; Todd Eliason [10%] | 6.4h | 712 |
| 65 | 1.10.1.4 | Prepare Sales Staff Training Manual | manual | 1d | 2014-10-03 | 2014-10-03 |  | Todd Fredson [5%]; Stacy Lyle [5%]; Todd Eliason [5%]; Jeff White [5%] | 1.6h | 60 |
| 66 | 1.10.1.5 | Prepare Retail Customer Support Training Manual | manual | 1d | 2014-10-06 | 2014-10-06 |  | Stacy Lyle [5%]; Chuck Gagler [5%]; Todd Eliason [5%] | 1.2h | 60 |
| 67 | 1.10.2 | **Training** |  | 4d | 2014-10-07 | 2014-10-10 |  |  | 72h | 5,400 |
| 68 | 1.10.2.1 | Create Training Schedule | manual | 1d | 2014-10-07 | 2014-10-07 |  | Trainer | 8h | 600 |
| 69 | 1.10.2.2 | Train retail customer support | manual | 4d | 2014-10-07 | 2014-10-10 |  | Trainer | 32h | 2,400 |
| 70 | 1.10.2.3 | Train Sales Department Staff | manual | 4d | 2014-10-07 | 2014-10-10 |  | Trainer | 32h | 2,400 |
